ID,Phase,Type,Name,Owner or approver,Duration (working days),Predecessors,Weeks,Early start (day),Early finish (day),Late finish (day),Total float (days),Critical,Options (decisions),If late (decisions),Criteria (gates),Source
D01,Phase 0 — Pre-flight,Decision,Approve Phase 0 and name the sponsor and steward,Executive sponsor and CIO,0,—,wk 1,0,0,0,0,Yes,Approve the four-week pre-flight; defer,Nothing starts; the external clocks keep running,,https://github.com/WhalerMike/modernization-workbook/blob/main/docs/start-here.md
P0.1,Phase 0 — Pre-flight,Task,Charter accepted; owners named in the decision matrix,Program office,3,D01,wk 1,0,3,3,0,Yes,,,,https://github.com/WhalerMike/modernization-workbook/blob/main/docs/books/b00-orientation/03-the-charter.md
P0.2,Phase 0 — Pre-flight,Task,"Platform host built, repository seeded, host connected through Arc",Platform teams,7,P0.1,wk 1–2,3,10,10,0,Yes,,,,https://github.com/WhalerMike/modernization-workbook/blob/main/docs/books/b01-transformation-arc/03-platform-foundation.md
P0.3,Phase 0 — Pre-flight,Task,"Least-privilege service principals for Entra ID, Intune and Arc",Platform teams,3,P0.1,wk 1–2,3,6,10,4,No,,,,https://github.com/WhalerMike/modernization-workbook/blob/main/docs/books/b01-transformation-arc/12-migration-roadmap.md#phase-0-pre-flight-weeks-14
P0.4,Phase 0 — Pre-flight,Task,Read-only assessment run and committed,Program office,10,"P0.2, P0.3",wk 3–4,10,20,20,0,Yes,,,,https://github.com/WhalerMike/modernization-workbook/blob/main/docs/books/b00-orientation/08-pre-flight-and-assessment.md
P0.5,Phase 0 — Pre-flight,Task,Transactions profiled for applications proposed to move from their data,Application owners,8,P0.1,wk 1–3,3,11,20,9,No,,,,https://github.com/WhalerMike/modernization-workbook/blob/main/docs/books/b01-transformation-arc/10-analyzing-the-estate.md#profiling-transactions-before-separation
P0.6,Phase 0 — Pre-flight,Task,Change process asks whether each change adds an AD dependency; exceptions to the AO,Program office,3,P0.1,wk 1–2,3,6,20,14,No,,,,https://github.com/WhalerMike/modernization-workbook/blob/main/docs/books/b13-governance/04-change-control-and-provenance.md#no-new-dependencies-on-active-directory
D11,Phase 0 — Pre-flight,Decision,"Provisional target end state: AD retired, or a dated Kerberos island",Executive sponsor and CIO,0,P0.4,end of wk 4,20,20,20,0,Yes,"AD retired completely; a Kerberos island for named workloads, with an end date",G0 can't pass: owners and budgets plan without a stated goal,,https://github.com/WhalerMike/modernization-workbook/blob/main/docs/books/b01-transformation-arc/12-migration-roadmap.md#phase-0-pre-flight-weeks-14
G0,Phase 0 — Pre-flight,Gate,G0 — Ready to Plan,Steward (backup: executive sponsor),0,"P0.4, P0.5, P0.6, D11",end of wk 4,20,20,20,0,Yes,,,Platform host operational; assessment committed; no open priority-one findings; provisional target end state recorded; no-new-AD-dependency rule in force,https://github.com/WhalerMike/modernization-workbook/blob/main/docs/books/b01-transformation-arc/12-migration-roadmap.md#gates-rollback-and-authority
D02,Phase 1 — Foundation,Decision,Authoritative source for each attribute that drives access,HR,0,G0,end of wk 4,20,20,20,0,Yes,HR system per attribute; a named alternative with a dated exception,"The taxonomy can't be approved, and the whole critical path waits",,https://github.com/WhalerMike/modernization-workbook/blob/main/docs/books/b01-transformation-arc/09-who-leads-the-transformation.md#decision-rights-across-the-program
P1.1,Phase 1 — Foundation,Task,Attribute taxonomy finalized (M-014),Platform teams,5,D02,wk 5,20,25,25,0,Yes,,,,https://github.com/WhalerMike/modernization-workbook/blob/main/docs/books/b00-orientation/09-design-pilot-and-rollout.md#design-milestones
P1.2,Phase 1 — Foundation,Task,Dynamic group design tested; enterprise groups and administrative units built (M-015),Platform teams,8,P1.1,wk 6–7,25,33,33,0,Yes,,,,https://github.com/WhalerMike/modernization-workbook/blob/main/docs/books/b00-orientation/09-design-pilot-and-rollout.md#design-milestones
P1.3,Phase 1 — Foundation,Task,Intune policy design complete; pilot profiles staged (M-016),Platform teams,5,P1.2,wk 7–8,33,38,38,0,Yes,,,,https://github.com/WhalerMike/modernization-workbook/blob/main/docs/books/b00-orientation/09-design-pilot-and-rollout.md#design-milestones
X-IDL,Phase 1 — Foundation,External,HR-to-cloud provisioning live for the foundation scope,Identity Lifecycle project,0,—,end of wk 8,40,40,40,0,No,,G1 fails its HR-feed criterion and waits,,https://github.com/WhalerMike/modernization-workbook/blob/main/docs/project-plans/identity-lifecycle.md
P1.5,Phase 1 — Foundation,Task,Conditional Access design running in report-only (M-017),CISO,10,G0,wk 5–6,20,30,37,7,No,,,,https://github.com/WhalerMike/modernization-workbook/blob/main/docs/books/b00-orientation/09-design-pilot-and-rollout.md#design-milestones
D03,Phase 1 — Foundation,Decision,Enforce the Conditional Access baseline,CISO,0,P1.5,end of wk 6,30,30,37,7,No,Enforce; extend report-only; enforce with dated exceptions,G1 can't pass: the baseline must be enforced,,https://github.com/WhalerMike/modernization-workbook/blob/main/docs/books/b01-transformation-arc/12-migration-roadmap.md#phase-1-foundation-weeks-58
P1.6,Phase 1 — Foundation,Task,Baseline enforced; emergency access accounts vaulted and tested,Platform teams,3,D03,wk 7,30,33,40,7,No,,,,https://github.com/WhalerMike/modernization-workbook/blob/main/docs/books/b01-transformation-arc/12-migration-roadmap.md#phase-1-foundation-weeks-58
P1.7,Phase 1 — Foundation,Task,"Sync and DNS Private Resolver designs; resolver deployed (M-018, M-019)",Platform teams,10,G0,wk 5–6,20,30,38,8,No,,,,https://github.com/WhalerMike/modernization-workbook/blob/main/docs/books/b00-orientation/09-design-pilot-and-rollout.md#design-milestones
D04,Phase 1 — Foundation,Decision,Root of trust for device certificates,Program office,0,G0,end of wk 4,20,20,30,10,No,Cloud PKI root; bring-your-own CA,The PKI design and the pilot certificates wait,,https://github.com/WhalerMike/modernization-workbook/blob/main/docs/books/b07-pki/index.md
P1.8,Phase 1 — Foundation,Task,Cloud PKI design; issuing CA created (M-020),Platform teams,8,"D04, P1.1",wk 6–7,25,33,38,5,No,,,,https://github.com/WhalerMike/modernization-workbook/blob/main/docs/books/b00-orientation/09-design-pilot-and-rollout.md#design-milestones
P1.9,Phase 1 — Foundation,Task,IPAM covers the platform host and Tier 0,Platform teams,10,G0,wk 5–6,20,30,40,10,No,,,,https://github.com/WhalerMike/modernization-workbook/blob/main/docs/books/b08-ddi/10-migration-sequence.md
P1.10,Phase 1 — Foundation,Task,Single sign-on; FIDO2 and passkeys open to Tier 0 administrators,Platform teams,8,G0,wk 5–6,20,28,40,12,No,,,,https://github.com/WhalerMike/modernization-workbook/blob/main/docs/books/b04-access/index.md
P1.11,Phase 1 — Foundation,Task,Every High assessment finding remediated and re-scanned,Platform teams,15,G0,wk 5–7,20,35,40,5,No,,,,https://github.com/WhalerMike/modernization-workbook/blob/main/docs/books/b00-orientation/09-design-pilot-and-rollout.md#foundation-build-and-pre-pilot-readiness
D05,Phase 1 — Foundation,Decision,Choose the pilot division,Program office,0,G0,end of wk 4,20,20,38,18,No,IT (tolerates disruption best); another division plus volunteers,Pilot groups can't be built; G1 fails its pilot-readiness criterion,,https://github.com/WhalerMike/modernization-workbook/blob/main/docs/books/b00-orientation/09-design-pilot-and-rollout.md#scope
P1.12,Phase 1 — Foundation,Task,Design review approved (M-021),Steward,2,"P1.3, P1.7, P1.8, D05",wk 8,38,40,40,0,Yes,,,,https://github.com/WhalerMike/modernization-workbook/blob/main/docs/books/b00-orientation/09-design-pilot-and-rollout.md#design-milestones
P1.13,Phase 1 — Foundation,Task,Pilot servers connected through Arc with machine configuration applied (M-030),Platform teams,10,G0 +10 d,wk 7–8,30,40,40,0,Yes,,,,https://github.com/WhalerMike/modernization-workbook/blob/main/docs/books/b05-devices/09-servers-under-azure-arc.md
G1,Phase 1 — Foundation,Gate,G1 — Foundation Complete,Steward,0,"P1.12, X-IDL, P1.6, P1.9, P1.10, P1.11, P1.13",end of wk 8,40,40,40,0,Yes,,,Designs approved; groups and AUs drift-clean; baseline Conditional Access enforced; emergency access tested; Tier 0 in IPAM; HR feed live for the foundation scope; pilot servers connected through Arc; FIDO2 and passkeys open to Tier 0 administrators; High findings closed,https://github.com/WhalerMike/modernization-workbook/blob/main/docs/books/b00-orientation/09-design-pilot-and-rollout.md#gate-g1-foundation-complete
D06,Phase 2 — Pilot division,Decision,Device pattern for each pilot cohort,Program office,0,G1,end of wk 8,40,40,55,15,No,New devices Entra joined; existing devices reset and re-enrolled; hybrid joined only with a cut date,Pilot devices can't move; the critical path waits,,https://github.com/WhalerMike/modernization-workbook/blob/main/docs/books/b05-devices/02-the-hybrid-join-trap.md
P2.1,Phase 2 — Pilot division,Task,"Sync deployed; pilot attributes, groups, AUs and delegated roles live (M-022)",Platform teams,10,G1,wk 9–10,40,50,50,0,Yes,,,,https://github.com/WhalerMike/modernization-workbook/blob/main/docs/books/b00-orientation/09-design-pilot-and-rollout.md#milestones
P2.2,Phase 2 — Pilot division,Task,"Pilot Conditional Access and Intune policies assigned (M-024, M-025)",Platform teams,5,P2.1,wk 11,50,55,55,0,Yes,,,,https://github.com/WhalerMike/modernization-workbook/blob/main/docs/books/b00-orientation/09-design-pilot-and-rollout.md#milestones
P2.3,Phase 2 — Pilot division,Task,Pilot devices moved by pattern (M-023),Platform teams,8,"P2.2, D06",wk 12–13,55,63,63,0,Yes,,,,https://github.com/WhalerMike/modernization-workbook/blob/main/docs/books/b00-orientation/09-design-pilot-and-rollout.md#milestones
P2.4,Phase 2 — Pilot division,Task,"First migrated GPOs unlinked from the pilot OUs, after 20 days of testing beside the linked GPOs",Platform teams,5,P2.2 +20 d,wk 16,75,80,80,0,Yes,,,,https://github.com/WhalerMike/modernization-workbook/blob/main/docs/books/b05-devices/07-the-gpo-sunset-program.md
P2.5,Phase 2 — Pilot division,Task,PIM for every pilot administrator (M-026),Platform teams,5,P2.1,wk 11,50,55,70,15,No,,,,https://github.com/WhalerMike/modernization-workbook/blob/main/docs/books/b00-orientation/09-design-pilot-and-rollout.md#milestones
P2.6,Phase 2 — Pilot division,Task,"Division DNS migrated, DHCP re-homed, hybrid resolution validated (M-027)",Platform teams,15,G1,wk 9–11,40,55,70,15,No,,,,https://github.com/WhalerMike/modernization-workbook/blob/main/docs/books/b08-ddi/10-migration-sequence.md
P2.7,Phase 2 — Pilot division,Task,Cloud PKI certificates issued; Wi-Fi and VPN verified (M-028),Platform teams,7,P2.3,wk 13–14,63,70,70,0,Yes,,,,https://github.com/WhalerMike/modernization-workbook/blob/main/docs/books/b00-orientation/09-design-pilot-and-rollout.md#milestones
P2.8,Phase 2 — Pilot division,Task,Certificate-based authentication for PIV and CAC holders (M-029),Platform teams,8,P2.1,wk 11–12,50,58,70,12,No,,,,https://github.com/WhalerMike/modernization-workbook/blob/main/docs/books/b00-orientation/09-design-pilot-and-rollout.md#milestones
P2.10,Phase 2 — Pilot division,Task,Rollback rehearsed surface by surface,Platform teams,3,P2.3,wk 13–14,63,66,70,4,No,,,,https://github.com/WhalerMike/modernization-workbook/blob/main/docs/books/b00-orientation/09-design-pilot-and-rollout.md#rollback-surface-by-surface
P2.11,Phase 2 — Pilot division,Task,"Drift-clean hold (14 days, illustrative); success criteria met (M-031)",Program office,10,"P2.5, P2.6, P2.7, P2.8, P2.10",wk 15–16,70,80,80,0,Yes,,,,https://github.com/WhalerMike/modernization-workbook/blob/main/docs/books/b00-orientation/09-design-pilot-and-rollout.md#gate-g2-pilot-clean
P2.12,Phase 2 — Pilot division,Task,Retrospective and runbook updates committed,Program office,5,P2.11 (SS) +5 d,wk 16,75,80,80,0,Yes,,,,https://github.com/WhalerMike/modernization-workbook/blob/main/docs/books/b00-orientation/09-design-pilot-and-rollout.md#gate-g2-pilot-clean
G2,Phase 2 — Pilot division,Gate,G2 — Pilot Clean,Steward and executive sponsor (co-signed),0,"P2.11, P2.12, P2.4",end of wk 16,80,80,80,0,Yes,,,Zero drift for the hold period; no AD-only users and no hybrid-joined PC without a cut date; no unresolved rollback trigger; retrospective committed,https://github.com/WhalerMike/modernization-workbook/blob/main/docs/books/b00-orientation/09-design-pilot-and-rollout.md#gate-g2-pilot-clean
D07,Phase 3 — General rollout,Decision,"Wave plan: which divisions, in which order",Executive sponsor and steering committee,0,G2,end of wk 16,80,80,80,0,Yes,"By region, lowest risk first; by department",Wave 1 can't start; the critical path waits,,https://github.com/WhalerMike/modernization-workbook/blob/main/docs/books/b00-orientation/09-design-pilot-and-rollout.md#waves-defined-by-attribute-values
P3.1,Phase 3 — General rollout,Task,"Wave 1, first region, about 25% (M-032)",Platform teams,22,D07,wk 17–21,80,102,102,0,Yes,,,,https://github.com/WhalerMike/modernization-workbook/blob/main/docs/books/b00-orientation/09-design-pilot-and-rollout.md#milestones-1
P3.2,Phase 3 — General rollout,Task,"Wave 2, about 50% cumulative (M-033)",Platform teams,22,P3.1,wk 21–25,102,124,124,0,Yes,,,,https://github.com/WhalerMike/modernization-workbook/blob/main/docs/books/b00-orientation/09-design-pilot-and-rollout.md#milestones-1
P3.3,Phase 3 — General rollout,Task,"Wave 3, about 75% cumulative (M-034)",Platform teams,22,P3.2,wk 25–30,124,146,146,0,Yes,,,,https://github.com/WhalerMike/modernization-workbook/blob/main/docs/books/b00-orientation/09-design-pilot-and-rollout.md#milestones-1
P3.4,Phase 3 — General rollout,Task,"Wave 4, everything remaining or excepted (M-035)",Platform teams,22,P3.3,wk 30–34,146,168,168,0,Yes,,,,https://github.com/WhalerMike/modernization-workbook/blob/main/docs/books/b00-orientation/09-design-pilot-and-rollout.md#milestones-1
P3.5,Phase 3 — General rollout,Task,GPO links off migrated OUs after 7 clean days (M-036),Platform teams,5,P3.4 (SS) +17 d,wk 33–34,163,168,180,12,No,,,,https://github.com/WhalerMike/modernization-workbook/blob/main/docs/books/b00-orientation/09-design-pilot-and-rollout.md#milestones-1
P3.6,Phase 3 — General rollout,Task,Attribute coverage at 100%; exception register reconciled (M-037),Program office,12,P3.4,wk 34–36,168,180,180,0,Yes,,,,https://github.com/WhalerMike/modernization-workbook/blob/main/docs/books/b00-orientation/09-design-pilot-and-rollout.md#gate-g3-rollout-complete
P3.7,Phase 3 — General rollout,Task,Every server Arc-connected or excepted,Platform teams,60,G2,wk 17–28,80,140,180,40,No,,,,https://github.com/WhalerMike/modernization-workbook/blob/main/docs/books/b05-devices/09-servers-under-azure-arc.md
G3,Phase 3 — General rollout,Gate,G3 — Rollout Complete,Executive sponsor and steering committee,0,"P3.5, P3.6, P3.7",end of wk 36,180,180,180,0,Yes,,,"Every division past its exit gate; every HR-listed employee with valid attributes; every PC cloud-joined and every server Arc-connected, or excepted; zero cross-division drift",https://github.com/WhalerMike/modernization-workbook/blob/main/docs/books/b01-transformation-arc/12-migration-roadmap.md#phase-3-general-rollout-weeks-1736
D08,Phase 4 — Legacy retirement,Decision,End dates for legacy authentication and NTLM,Authorizing official,0,G2,end of wk 16,80,80,180,100,No,"A dated end per protocol; a dated, risk-accepted exception per application",Application owners have no date to plan against; SPN retirement slips,,https://github.com/WhalerMike/modernization-workbook/blob/main/docs/books/b01-transformation-arc/09-who-leads-the-transformation.md#decision-rights-across-the-program
P4.1,Phase 4 — Legacy retirement,Task,Migrated GPOs disabled and held as the rollback net (deletion follows the 90-day hold: Endpoint plan E5.2),Platform teams,5,G3,wk 37,180,185,205,20,No,,,,https://github.com/WhalerMike/modernization-workbook/blob/main/docs/books/b01-transformation-arc/12-migration-roadmap.md#phase-4-legacy-retirement-weeks-3744
P4.2,Phase 4 — Legacy retirement,Task,OU-based security groups retired,Platform teams,5,P4.1,wk 38,185,190,210,20,No,,,,https://github.com/WhalerMike/modernization-workbook/blob/main/docs/books/b01-transformation-arc/12-migration-roadmap.md#phase-4-legacy-retirement-weeks-3744
P4.3,Phase 4 — Legacy retirement,Task,"AD-integrated DNS zones moved, except the domain's own zones",Platform teams,15,G3,wk 37–39,180,195,205,10,No,,,,https://github.com/WhalerMike/modernization-workbook/blob/main/docs/books/b08-ddi/10-migration-sequence.md
P4.4,Phase 4 — Legacy retirement,Task,DHCP scopes moved off the AD-authorized servers (de-authorizing them is the Network plan's D-N12),Platform teams,5,P4.3,wk 40,195,200,210,10,No,,,,https://github.com/WhalerMike/modernization-workbook/blob/main/docs/books/b01-transformation-arc/12-migration-roadmap.md#phase-4-legacy-retirement-weeks-3744
P4.5,Phase 4 — Legacy retirement,Task,User and device issuance off AD CS; smart-card logon GPO retired,Platform teams,15,G3,wk 37–39,180,195,210,15,No,,,,https://github.com/WhalerMike/modernization-workbook/blob/main/docs/books/b07-pki/07-coexistence-and-migration.md
P4.6,Phase 4 — Legacy retirement,Task,"AD-bound service principal names migrated, retired or islanded, app by app",Application owners,30,"G3, D08",wk 37–42,180,210,210,0,Yes,,,,https://github.com/WhalerMike/modernization-workbook/blob/main/docs/books/b01-transformation-arc/12-migration-roadmap.md#phase-4-legacy-retirement-weeks-3744
P4.7,Phase 4 — Legacy retirement,Task,AD authentication volume measured below the agreed threshold,Program office,10,"P4.6, P4.2, P4.4, P4.5",wk 43–44,210,220,220,0,Yes,,,,https://github.com/WhalerMike/modernization-workbook/blob/main/docs/books/b01-transformation-arc/12-migration-roadmap.md#phase-4-legacy-retirement-weeks-3744
G4,Phase 4 — Legacy retirement,Gate,G4 — Legacy Quiet,Steward (backup: executive sponsor),0,P4.7,end of wk 44,220,220,220,0,Yes,,,"Only the minimum GPOs; no AD security groups in use; every zone but the domain's moved; user and device issuance off AD CS; every SPN migrated, retired or islanded; AD authentication below threshold",https://github.com/WhalerMike/modernization-workbook/blob/main/docs/books/b01-transformation-arc/12-migration-roadmap.md#phase-4-legacy-retirement-weeks-3744
D09,Phase 5 — AD DS retirement,Decision,Confirm or revise the target end state set at G0 (D11),Executive sponsor and CIO,0,"G3, D11",end of wk 36,180,180,225,45,No,"Confirm the G0 target; revise it with what Phase 4 left: retire completely, or keep a documented island with an end-of-life date",The demotion sequence can't be planned,,https://github.com/WhalerMike/modernization-workbook/blob/main/docs/books/b01-transformation-arc/12-migration-roadmap.md#phase-5-ad-ds-retirement-weeks-4548
D10,Phase 5 — AD DS retirement,Decision,Retention of AD-era logs and records,Records officer,0,G3,end of wk 36,180,180,235,55,No,Retention schedule and archive location approved,Domain controllers can't be decommissioned: their logs can't be recovered afterward,,https://github.com/WhalerMike/modernization-workbook/blob/main/docs/books/b01-transformation-arc/09-who-leads-the-transformation.md#decision-rights-across-the-program
P5.1,Phase 5 — AD DS retirement,Task,AD changes frozen; final assessment and evidence packet,Program office,5,G4,wk 45,220,225,225,0,Yes,,,,https://github.com/WhalerMike/modernization-workbook/blob/main/docs/books/b01-transformation-arc/12-migration-roadmap.md#phase-5-ad-ds-retirement-weeks-4548
P5.2,Phase 5 — AD DS retirement,Task,Domain controllers without operations master roles demoted,Platform teams,5,"P5.1, D09",wk 46,225,230,230,0,Yes,,,,https://github.com/WhalerMike/modernization-workbook/blob/main/docs/books/b01-transformation-arc/12-migration-roadmap.md#phase-5-ad-ds-retirement-weeks-4548
P5.3,Phase 5 — AD DS retirement,Task,Remaining domain controllers demoted or islanded; domain zones moved or retired,Platform teams,5,P5.2,wk 47,230,235,235,0,Yes,,,,https://github.com/WhalerMike/modernization-workbook/blob/main/docs/books/b01-transformation-arc/12-migration-roadmap.md#phase-5-ad-ds-retirement-weeks-4548
P5.4,Phase 5 — AD DS retirement,Task,VMs decommissioned; final state archived; retirement record committed,Platform teams,5,"P5.3, D10",wk 48,235,240,240,0,Yes,,,,https://github.com/WhalerMike/modernization-workbook/blob/main/docs/books/b01-transformation-arc/12-migration-roadmap.md#phase-5-ad-ds-retirement-weeks-4548
G5,Phase 5 — AD DS retirement,Gate,G5 — AD Retired,Executive sponsor and CIO,0,P5.4,end of wk 48,240,240,240,0,Yes,,,Domain controllers decommissioned or a dated Kerberos island; evidence packet in the repository and the SIEM; no production dependency on AD authentication,https://github.com/WhalerMike/modernization-workbook/blob/main/docs/books/b01-transformation-arc/12-migration-roadmap.md#phase-5-ad-ds-retirement-weeks-4548
